# Planning études

Schedule from MS Project, 2006-02-13 to 2008-04-28, 7 hours a day.
caruso

## Calendars

- Standard: Mon-Fri 09:00-12:00, 14:00-18:00; Sat-Sun off.

## Resources

| Resource |
| --- |
| KKL |
| dossier archi |

## Schedule

| ID | WBS | Task | Duration | Start | Finish | Predecessors | Total slack | Free slack | Constraint |
| --- | --- | --- | --- | --- | --- | --- | --- | --- | --- |
| 1 | 1 | DIAGNOSTIC / APS / PC | 63d | 2006-03-02 | 2006-05-29 |  | 149d |  | finish no earlier than 2006-05-29 |
| 2 | 2 | diagnostic lots architectutaux | 10d | 2006-02-13 | 2006-02-24 |  | 530d | 1d |  |
| 3 | 3 | APS architecte | 73d | 2006-02-28 | 2006-06-08 | 2 | 492d |  | finish no earlier than 2006-06-08 |
| 4 | 4 | APS structure | 73d | 2006-02-28 | 2006-06-08 |  | 141d |  | finish no earlier than 2006-06-08 |
| 5 | 5 | APS lots techniques | 73d | 2006-02-28 | 2006-06-08 |  | 108d | 2d | finish no earlier than 2006-06-08 |
| 6 | 6 | APS Présentation NEXIS | 1d | 2006-06-13 | 2006-06-13 | 5 | 106d | 1d | start no earlier than 2006-06-13 |
| 7 | 7 | Validation NEXIS | 7d | 2006-06-15 | 2006-06-23 | 6 | 456d | 0d | finish no earlier than 2006-06-23 |
| 8 | 8 | DOSSIER PC | 25d | 2006-06-26 | 2006-07-28 | 7 | 105d |  |  |
| 9 | 9 | Préparation PC | 15d | 2006-06-26 | 2006-07-14 |  | 343d | 0d | start no earlier than 2006-06-26 |
| 10 | 10 | Remise PC / PD NEXIS | 1d | 2006-07-17 | 2006-07-17 | 9 | 343d | 0d |  |
| 11 | 11 | validation NEXIS | 6d | 2006-07-18 | 2006-07-25 | 10 | 343d | 0d | start no earlier than 2006-07-14 |
| 12 | 12 | Signature PC/ PD | 2d | 2006-07-26 | 2006-07-27 | 11 | 343d | 0d | finish no earlier than 2006-07-26 |
| 13 | 13 | Dépôt PC / PD | 2d | 2006-07-28 | 2006-07-31 | 12 | 343d | 0d | finish no earlier than 2006-07-27 |
| 14 | 14 | OBTENTION PC | 112d | 2006-08-01 | 2007-01-03 | 13 | 343d |  |  |
| 15 | 15 | DCE curage et désamiantage | 76d | 2006-06-26 | 2006-10-09 |  | 405d |  | start no earlier than 2006-06-26 |
| 16 | 16 | Dossier DCE | 64d | 2006-06-26 | 2006-09-21 |  | 306d | 0d | start no earlier than 2006-06-26 |
| 17 | 17 | consultation entreprises | 25d | 2006-09-22 | 2006-10-26 | 16 | 306d | 0d |  |
| 18 | 18 | Dépouillement | 18d | 2006-10-27 | 2006-11-21 | 17 | 306d | 0d |  |
| 19 | 19 | désignation entreprises | 8d | 2006-11-22 | 2006-12-01 | 18 | 306d | 22d |  |
| 20 | 20 | installation de chantier | 15d | 2007-01-03 | 2007-01-23 | 19 | 284d | 0d | start no earlier than 2007-01-03 |
| 21 | 21 | travaux de curage et désamiantage | 45d | 2007-01-24 | 2007-03-27 | 20 | 284d |  |  |
| 22 | 22 | DOSSIER APD/ DCE | 190d | 2006-07-24 | 2007-04-13 |  | 271d |  | start no earlier than 2006-07-24 |
| 23 | 23 | Etudes AO | 100d | 2006-07-24 | 2006-12-08 |  | 0d |  | start no earlier than 2006-07-24 |
| 24 | 24 | consultations | 30d | 2006-12-11 | 2007-01-19 | 23 | 0d |  |  |
| 25 | 25 | ACT négociations | 45d | 2007-01-22 | 2007-03-23 | 24 | 0d |  |  |
| 26 | 26 | dossier marché | 10d | 2007-03-26 | 2007-04-06 | 25 | 0d |  | start no earlier than 2007-03-26 |
| 27 | 27 | ORDRE DE SERVICE | 2d | 2007-04-09 | 2007-04-10 | 26 | 0d |  | start no earlier than 2007-04-09 |
| 29 | 28 | DUREE DU CHANTIER | 274d | 2007-04-11 | 2008-04-28 | 27 | 0d |  |  |

Notes:
- 3: aps archi
- 7: validation NEXIS
- 10: Remise PC/ PD NEXIS
